# SR1421

Schedule from a web Gantt chart, 2024-08-21 to 2024-08-30.
Saturdays and Sundays are off

## Schedule

| ID | WBS | Task | Duration | Start | Finish |
| --- | --- | --- | --- | --- | --- |
| 2 | 1 | **SR1420** | 8d | 2024-08-21 | 2024-08-30 |
| 3 | 1.1 | **需求/设计** | 8d | 2024-08-21 | 2024-08-30 |
| 4 | 1.1.1 | 研发需求 | 1d | 2024-08-21 | 2024-08-21 |
| 5 | 1.1.2 | UI/UE | 1d | 2024-08-30 | 2024-08-30 |
| 6 | 1.2 | **软件开发** | 1d | 2024-08-30 | 2024-08-30 |
| 7 | 1.2.1 | 技术方案 | 1d | 2024-08-30 | 2024-08-30 |
| 8 | 1.2.2 | 设计规格书 | 1d | 2024-08-30 | 2024-08-30 |
| 9 | 1.2.3 | 代码实现 | 1d | 2024-08-30 | 2024-08-30 |
| 10 | 1.2.4 | 单元测试 | 1d | 2024-08-30 | 2024-08-30 |
| 11 | 1.3 | **软件集成** | 1d | 2024-08-30 | 2024-08-30 |
| 12 | 1.3.1 | 集成计划 | 1d | 2024-08-30 | 2024-08-30 |
| 13 | 1.3.2 | 集成测试 | 1d | 2024-08-30 | 2024-08-30 |
| 14 | 1.3.3 | 集成报告 | 1d | 2024-08-30 | 2024-08-30 |
| 15 | 1.4 | **软件测试** | 1d | 2024-08-30 | 2024-08-30 |
| 16 | 1.4.1 | 测试计划 | 1d | 2024-08-30 | 2024-08-30 |
| 17 | 1.4.2 | 软件测试 | 1d | 2024-08-30 | 2024-08-30 |
| 18 | 1.4.3 | 测试报告 | 1d | 2024-08-30 | 2024-08-30 |
| 19 | 1.4.4 | 901 | 1d | 2024-08-30 | 2024-08-30 |
| 20 | 1.4.5 | RHF | 1d | 2024-08-30 | 2024-08-30 |
